# NCICBSecurityService_phase3

Schedule from MS Project, 2005-04-01 to 2006-01-23, A marks actual dates.
Home

## Calendars

- Standard: Mon-Fri 08:00-12:00, 13:00-17:00; Sat-Sun off.

## Resources

| Resource |
| --- |
| Vinay |
| Resource 1 |
| Brian |
| Kalpesh |
| Kunal |
| Eric |
| Charles |
| Team |
| Steve |
| JJ |
| Kunal Eric |
| Viany |
| New |
| XYZ |

## Schedule

| ID | WBS | Task | Duration | Start | Finish | Predecessors | Complete | Remaining | Total slack | Free slack | Constraint | Resources | Work | Actual work |
| --- | --- | --- | --- | --- | --- | --- | --- | --- | --- | --- | --- | --- | --- | --- |
| 1 | 1 | **Security Module (Release four)** | 212d? | 2005-04-01 A | 2006-01-23 |  | 10% | 190.21d? | 0d |  |  |  | 7365.04h | 1129.72h |
| 2 | 1.1 | Application Integration and Support | 174d? | 2005-04-01 | 2005-11-30 |  |  |  | 38d |  | start no earlier than 2005-04-01 | Kunal [25%]; Vinay [5%] | 348.4h |  |
| 3 | 1.2 | **Inception** | 34d? | 2005-04-01 A | 2005-05-18 |  | 60% | 13.67d? | 178d |  |  |  | 803.6h | 516h |
| 4 | 1.2.1 | Phase 3 Evaluation | 5.25d | 2005-04-04 A | 2005-04-11 |  | 67% | 1.75d | 205.75d |  | start no earlier than 2004-08-02 | Vinay; Kunal | 56h | 28h |
| 5 | 1.2.2 | RI Fixing | 3d | 2005-04-11 A | 2005-04-14 A | 4 | 100% |  |  |  |  | Kunal; Brian | 48h | 48h |
| 6 | 1.2.3 | RI documentation | 7d | 2005-04-01 A | 2005-04-11 A |  | 100% |  |  |  | finish no earlier than 2005-04-11 | Kunal; Eric | 112h | 112h |
| 7 | 1.2.4 | Ri Testing and release | 4d | 2005-04-12 A | 2005-04-15 A | 6 | 100% |  |  |  | finish no earlier than 2005-04-15 | Kunal; Eric; Vinay | 96h | 96h |
| 8 | 1.2.5 | caBIG Annual Meeting | 2d | 2005-04-12 A | 2005-04-13 A | 7 | 100% |  |  |  |  | Vinay; Eric; Kunal; Kalpesh | 64h | 64h |
| 9 | 1.2.6 | Research & Analysis | 5d | 2005-04-14 | 2005-04-20 | 8 |  |  | 193d |  |  | Vinay; Kunal | 80h |  |
| 10 | 1.2.7 | CM configuration | 2d | 2005-04-21 A | 2005-04-22 A | 9 | 100% |  |  |  | start no earlier than 2005-04-20 | Eric; Kunal | 32h | 32h |
| 11 | 1.2.8 | Overall Scope and Vision Document | 5d | 2005-04-11 A | 2005-04-21 A |  | 100% |  |  |  | finish no earlier than 2005-04-21 | Vinay; Eric; Kunal | 104h | 104h |
| 12 | 1.2.9 | SDK Research & Analysis | 2d | 2005-04-26 A | 2005-04-27 A |  | 100% |  |  |  | start no earlier than 2005-04-26 | Vinay | 16h | 16h |
| 13 | 1.2.10 | SDK Scope/Vision Document | 2d | 2005-04-27 A | 2005-04-28 A | 12FS-1d | 100% |  |  |  | start no earlier than 2005-04-27 | Vinay | 16h | 16h |
| 14 | 1.2.11 | Scope Vision Review & Discussion | 1d | 2005-04-29 | 2005-04-29 | 13 |  |  | 154.73d | 0d |  |  |  |  |
| 15 | 1.2.12 | Supplentary Specifications | 3d | 2005-05-04 | 2005-05-06 | 25 |  |  | 173d | 0d | start no earlier than 2004-09-01 | Vinay; Kunal [15%] | 27.6h |  |
| 16 | 1.2.13 | Review Supplementart Specs | 1d | 2005-05-09 | 2005-05-09 | 15 |  |  | 180d |  |  | Eric | 8h |  |
| 17 | 1.2.14 | SWG Meeting | 0.75d? | 2005-05-05 | 2005-05-05 |  |  |  | 182.25d |  | start no earlier than 2005-05-05 | Vinay; Kunal; Eric; Charles | 24h |  |
| 18 | 1.2.15 | Fuctional Specifications | 7d | 2005-05-09 | 2005-05-17 | 15 |  |  | 173d | 0d |  | Vinay; Kunal | 112h |  |
| 19 | 1.2.16 | Identify Risk List | 0.5d | 2005-05-17 | 2005-05-18 | 18 |  |  | 173d | 0d |  | Charles; Vinay | 4h |  |
| 20 | 1.2.17 | Update Detail task plan | 0.5d | 2005-05-18 | 2005-05-18 | 19 |  |  | 173d |  | start no earlier than 2005-04-11 | Vinay; Charles | 4h |  |
| 21 | 1.3 | **3.0.1 Release** | 50d | 2005-04-25 A | 2005-07-01 |  | 47% | 26.4d | 0d |  |  |  | 960.4h | 481.72h |
| 22 | 1.3.1 | Scope Document | 3d | 2005-04-25 A | 2005-04-27 A |  | 100% |  |  |  | start no earlier than 2005-04-22 | Vinay; Kunal | 48h | 48h |
| 23 | 1.3.2 | **Iteration I** | 16d | 2005-04-28 A | 2005-05-19 A | 22 | 100% |  |  |  |  |  | 395.2h | 395.2h |
| 24 | 1.3.2.1 | **API Changes & Bug Fixes** | 14d | 2005-05-02 A | 2005-05-19 A |  | 100% |  |  |  |  |  | 147.2h | 147.2h |
| 25 | 1.3.2.1.1 | Modify API for Negative Privileges | 2d | 2005-05-02 A | 2005-05-03 A | 14 | 100% |  |  |  | start no earlier than 2005-05-02 | Vinay [10%]; Kunal | 17.6h | 17.6h |
| 26 | 1.3.2.1.2 | Modify API for Primitive Data Types | 2d | 2005-05-03 A | 2005-05-04 A | 25FS-1d | 100% |  |  |  |  | Vinay [10%]; Kunal | 17.6h | 17.6h |
| 27 | 1.3.2.1.3 | Cross Database Compatibility | 12d | 2005-05-04 A | 2005-05-19 A | 25 | 100% |  |  |  |  | Vinay [20%]; Kunal | 112h | 112h |

| ID | WBS | Task | Duration | Start | Finish | Predecessors | Complete | Remaining | Total slack | Free slack | Constraint | Resources | Work | Actual work |
| --- | --- | --- | --- | --- | --- | --- | --- | --- | --- | --- | --- | --- | --- | --- |
| 28 | 1.3.2.2 | **UPT Changes & Bug Fixes** | 10d | 2005-04-28 A | 2005-05-11 A |  | 100% |  |  |  |  |  | 200h | 200h |
| 29 | 1.3.2.2.1 | UI Bug Fixes | 3d | 2005-04-28 A | 2005-05-02 A | 22 | 100% |  |  |  |  | Eric | 24h | 24h |
| 30 | 1.3.2.2.2 | Modify Association Screen | 4d | 2005-05-02 A | 2005-05-05 A | 29FS-1d | 100% |  |  |  |  | Kunal; Eric | 64h | 64h |
| 31 | 1.3.2.2.3 | Cross Browser Compatibility | 7d | 2005-05-03 A | 2005-05-11 A | 29 | 100% |  |  |  |  | Eric; Kunal | 112h | 112h |
| 32 | 1.3.2.3 | Integration Test - UPT Changes | 3d | 2005-05-13 A | 2005-05-17 A | 28 | 100% |  |  |  |  | Eric | 24h | 24h |
| 33 | 1.3.2.4 | Bug Fix | 1d | 2005-05-17 A | 2005-05-17 A | 28 | 100% |  |  |  | finish no earlier than 2005-05-17 | Eric | 8h | 8h |
| 34 | 1.3.2.5 | Test on QA | 1d | 2005-05-18 A | 2005-05-18 A | 32 | 100% |  |  |  |  | Eric | 8h | 8h |
| 35 | 1.3.2.6 | Release for FCCC only UPT.war | 1d | 2005-05-19 A | 2005-05-19 A | 34 | 100% |  |  |  |  | Kunal | 8h | 8h |
| 36 | 1.3.3 | **Iteration II** | 47d | 2005-04-28 A | 2005-07-01 |  | 13% | 40.68d | 0d |  |  |  | 517.2h | 38.52h |
| 37 | 1.3.3.1 | Modify nightly build script | 4d | 2005-04-28 A | 2005-05-03 | 22 | 95% | 0.2d | 43d |  |  | Brian [25%]; Kunal | 9.6h | 7.6h |
| 38 | 1.3.3.2 | **API Changes & Bug Fixes** | 10d | 2005-05-20 A | 2005-06-02 |  | 25% | 7.45d | 21d |  |  |  | 83.6h | 18.12h |
| 39 | 1.3.3.2.1 | Standardize Privileges | 1d | 2005-05-23 A | 2005-05-23 | 23 | 80% | 0.2d | 29d |  | start no earlier than 2005-05-20 | Vinay [25%] | 2h | 1.6h |
| 40 | 1.3.3.2.2 | **Provide new Methods for Reporting & Changes for Caching** | 10d | 2005-05-20 A | 2005-06-02 | 27 | 20% | 8d | 0d |  |  |  | 81.6h | 16.52h |
| 41 | 1.3.3.2.2.1 | Design | 3d | 2005-05-20 A | 2005-05-24 |  | 55% | 1.35d | 0.35d | 0d |  | Kunal; Vinay [10%] | 25.6h | 13.72h |
| 42 | 1.3.3.2.2.2 | Implementation | 7d | 2005-05-25 A | 2005-06-02 | 41 | 5% | 6.65d | 0d |  |  | Kunal | 56h | 2.8h |
| 43 | 1.3.3.3 | **UPT Changes & Bug Fixes** | 12d | 2005-05-26 | 2005-06-10 |  |  |  | 6d |  |  |  | 64h |  |
| 44 | 1.3.3.3.1 | Modify UPT for Standard Privileges | 2d | 2005-05-26 | 2005-05-27 | 53 |  |  | 20d | 0d |  | Eric | 16h |  |
| 45 | 1.3.3.3.2 | Provide Reporting Functionality | 6d | 2005-06-03 | 2005-06-10 | 42 |  |  | 0d |  |  | Kunal | 48h |  |
| 46 | 1.3.3.4 | **RI Changes & Bug Fixes** | 5d | 2005-06-13 | 2005-06-17 |  |  |  | 8d |  |  |  | 40h |  |
| 47 | 1.3.3.4.1 | Modify RI to use new APIs | 5d | 2005-06-13 | 2005-06-17 | 45 |  |  | 8d | 0d |  | Kunal | 40h |  |
| 48 | 1.3.3.5 | **Update Documentations** | 17d | 2005-05-30 | 2005-06-21 |  |  |  | 8d |  |  |  | 56h |  |
| 49 | 1.3.3.5.1 | RI Guide | 2d | 2005-06-20 | 2005-06-21 | 47 |  |  | 8d |  | start no earlier than 2005-06-02 | Kunal | 16h |  |
| 50 | 1.3.3.5.2 | Developers Guide | 3d | 2005-05-30 | 2005-06-01 | 44 |  |  | 20d | 0d |  | Eric | 24h |  |
| 51 | 1.3.3.5.3 | UPT Guide Changes | 2d | 2005-06-02 | 2005-06-03 | 50 |  |  | 20d |  |  | Eric | 16h |  |

| ID | WBS | Task | Duration | Start | Finish | Predecessors | Complete | Remaining | Total slack | Free slack | Constraint | Resources | Work | Actual work |
| --- | --- | --- | --- | --- | --- | --- | --- | --- | --- | --- | --- | --- | --- | --- |
| 52 | 1.3.3.6 | **Testing** | 30d | 2005-05-20 A | 2005-06-30 |  | 6% | 28.08d | 1d |  |  |  | 256h | 12.8h |
| 53 | 1.3.3.6.1 | Developing Test Cases | 4d | 2005-05-20 A | 2005-05-25 | 35 | 40% | 2.4d | 20d | 0d |  | Eric | 32h | 12.8h |
| 54 | 1.3.3.6.2 | Integration Test - API and UPT Changes | 7d | 2005-06-13 | 2005-06-21 | 45 |  |  | 0d |  |  | Eric | 56h |  |
| 55 | 1.3.3.6.3 | Bug Fix | 7d | 2005-06-13 | 2005-06-21 | 45 |  |  | 8d |  | finish no earlier than 2005-05-17 | Kunal | 56h |  |
| 56 | 1.3.3.6.4 | Test on QA | 4d | 2005-06-22 | 2005-06-27 | 54 |  |  | 0d |  |  | Eric; Kunal | 64h |  |
| 57 | 1.3.3.6.5 | Stage Testing | 3d | 2005-06-28 | 2005-06-30 | 56 |  |  | 0d |  |  | Kunal; Eric | 48h |  |
| 58 | 1.3.3.7 | Releasing and Baselining | 1d | 2005-07-01 | 2005-07-01 | 57 |  |  | 0d |  |  | Kunal | 8h |  |
| 59 | 1.4 | **SDK Release** | 48d | 2005-05-02 A | 2005-07-06 | 14 | 24% | 36.27d | 143d |  |  | Vinay [75%] | 540h | 132h |
| 60 | 1.4.1 | Research/Design | 11d | 2005-05-02 A | 2005-05-16 A |  | 100% |  |  |  | start no earlier than 2005-05-02 | Vinay [75%] | 66h | 66h |
| 61 | 1.4.2 | Design Approach Review | 1d | 2005-05-17 | 2005-05-17 | 60 |  |  | 146d | 3d |  | Vinay [75%] | 6h |  |
| 62 | 1.4.3 | Development | 23d | 2005-05-23 | 2005-06-22 | 61 |  |  | 143d | 0d |  | Vinay [75%] | 138h |  |
| 63 | 1.4.4 | System Test QA | 10d | 2005-06-23 | 2005-07-06 | 62 |  |  | 143d |  |  | Vinay [75%] | 60h |  |
| 64 | 1.5 | **Elaboration** | 20d | 2005-07-04 | 2005-07-29 | 21 |  |  | 0d |  |  |  | 815.04h |  |
| 65 | 1.5.1 | **Iteration I** | 20d | 2005-07-04 | 2005-07-29 |  |  |  | 0d |  |  |  | 464h |  |
| 66 | 1.5.1.1 | Detailed Iteration Release Plan | 1d | 2005-07-04 | 2005-07-04 |  |  |  | 18d | 0d | start no earlier than 2005-05-17 | Vinay | 8h |  |
| 67 | 1.5.1.2 | Research Prototype Development | 20d | 2005-07-04 | 2005-07-29 |  |  |  | 0d |  | start no earlier than 2005-04-26 | XYZ; Kunal | 320h |  |
| 68 | 1.5.1.3 | Level 1 - 2 Use Cases | 5d | 2005-07-04 | 2005-07-08 |  |  |  | 15d |  | start no earlier than 2005-05-17 | Vinay; Eric | 80h |  |
| 69 | 1.5.1.4 | Peer Review of Use Cases | 1d | 2005-07-04 | 2005-07-04 |  |  |  | 19d |  | start no earlier than 2005-05-24 | Eric | 8h |  |
| 70 | 1.5.1.5 | Risk List Priority | 1d | 2005-07-05 | 2005-07-05 | 66 |  |  | 18d |  |  | Vinay | 8h |  |
| 71 | 1.5.1.6 | **Finalize Requirements** | 2d | 2005-07-04 | 2005-07-05 |  |  |  | 0.44d |  |  |  | 40h |  |
| 72 | 1.5.1.6.1 | User Working Group Review | 1d | 2005-07-04 | 2005-07-04 |  |  |  | 0.44d | 0d | start no earlier than 2005-05-26 | XYZ; Vinay; Kunal; Eric; Charles | 40h |  |
| 73 | 1.5.1.6.2 | Stakeholder Sign Off | 1d | 2005-07-05 | 2005-07-05 | 72 |  |  | 0.44d | 0d | start no earlier than 2004-10-01 |  |  |  |
| 74 | 1.5.2 | **Iteration II** | 18.56d | 2005-07-04 | 2005-07-28 |  |  |  | 0.44d | 0d |  |  | 335.04h |  |
| 75 | 1.5.2.1 | Develop Architecture Prototype / Framework | 6d | 2005-07-06 | 2005-07-13 | 73 |  |  | 0.44d | 0d | finish no earlier than 2005-06-03 | Vinay; Kunal; XYZ | 144h |  |
| 76 | 1.5.2.2 | Software Architecture Document | 8d | 2005-07-14 | 2005-07-27 | 75 |  |  | 0.44d | 0d | start no earlier than 2005-06-02 | Vinay; Kunal; Eric; XYZ | 151.04h |  |
| 77 | 1.5.2.3 | Architecture Peer Review | 1d | 2005-07-04 | 2005-07-04 |  |  |  | 18d |  | start no earlier than 2005-06-07 | Kunal; Vinay; Eric; XYZ | 32h |  |
| 78 | 1.5.2.4 | Prioritize Risk List | 1d | 2005-07-27 | 2005-07-28 | 76 |  |  | 0.44d |  | start no earlier than 2004-10-26 | Vinay | 8h |  |
| 79 | 1.5.3 | Phase Review | 1d | 2005-07-28 | 2005-07-29 | 74 |  |  | 0.44d |  |  | Eric; Charles | 16h |  |

Notes:
- 73: An email was sent out to the group and no one responded. Hence this task has been marked as 100%

| ID | WBS | Task | Type | Duration | Start | Finish | Predecessors | Total slack | Free slack | Constraint | Resources | Work |
| --- | --- | --- | --- | --- | --- | --- | --- | --- | --- | --- | --- | --- |
| 80 | 1.6 | **Construction** |  | 103d | 2005-08-01 | 2005-12-21 | 64 | 0d |  |  |  | 3240h |
| 81 | 1.6.1 | **Iteration - SSO** |  | 56d | 2005-08-01 | 2005-10-17 |  | 0d |  |  |  | 560h |
| 82 | 1.6.1.1 | Detailed Iteration Plan |  | 1d | 2005-08-01 | 2005-08-01 | 64 | 0d |  | start no earlier than 2004-10-26 | Vinay | 8h |
| 83 | 1.6.1.2 | **Design** |  | 9d | 2005-08-02 | 2005-08-12 |  | 0d |  |  |  | 120h |
| 84 | 1.6.1.2.1 | Level 3 - 4 Use Cases |  | 3d | 2005-08-02 | 2005-08-04 | 82 | 0d |  | start no earlier than 2004-10-27 | Vinay | 24h |
| 85 | 1.6.1.2.2 | Use Case Model |  | 1d | 2005-08-05 | 2005-08-05 | 84 | 0d |  | start no earlier than 2004-10-27 | Vinay | 8h |
| 86 | 1.6.1.2.3 | UML Sequence Diagram |  | 1d | 2005-08-08 | 2005-08-08 | 85 | 97d |  |  | Vinay | 8h |
| 87 | 1.6.1.2.4 | UML Activity Diagram |  | 1d | 2005-08-08 | 2005-08-08 | 85 | 0d |  | start no earlier than 2004-10-29 | Vinay | 8h |
| 88 | 1.6.1.2.5 | UML Class Diagram |  | 3d | 2005-08-09 | 2005-08-11 | 87 | 0d |  |  | Vinay | 24h |
| 89 | 1.6.1.2.6 | Design Review |  | 1d | 2005-08-12 | 2005-08-12 | 88 | 0d |  |  | Charles | 8h |
| 90 | 1.6.1.2.7 | Test Case Development |  | 5d | 2005-08-08 | 2005-08-12 | 85 | 93d |  |  | Eric | 40h |
| 91 | 1.6.1.3 | **Implementation** |  | 41d | 2005-08-15 | 2005-10-10 |  | 47d | 0d |  |  | 344h |
| 92 | 1.6.1.3.1 | Environment Setup |  | 4d | 2005-08-15 | 2005-08-18 | 89, 110 | 47d | 0d | start no earlier than 2004-11-01 | Kunal | 32h |
| 93 | 1.6.1.3.2 | Junit Test Development |  | 4d | 2005-08-19 | 2005-08-24 | 92 | 47d | 0d | start no earlier than 2005-07-15 | Kunal | 32h |
| 94 | 1.6.1.3.3 | Code Development + Unit Testing |  | 33d | 2005-08-25 | 2005-10-10 | 93 | 47d | 0d | start no earlier than 2004-11-08 | Kunal | 264h |
| 95 | 1.6.1.3.4 | Code Reviews |  | 2d | 2005-10-07 | 2005-10-10 | 94FS-2d | 47d | 0d | finish no earlier than 2004-11-15 | Charles | 16h |
| 96 | 1.6.1.3.5 | Promote to QA | milestone | 0d | 2005-10-10 | 2005-10-10 | 95 | 47d |  |  |  |  |
| 97 | 1.6.1.4 | **Integration Testing** |  | 5d | 2005-10-11 | 2005-10-17 |  | 47d | 0d |  |  | 88h |
| 98 | 1.6.1.4.1 | QA Testing |  | 4d | 2005-10-11 | 2005-10-14 | 91 | 48d |  |  | Eric | 32h |
| 99 | 1.6.1.4.2 | Bug Fixes |  | 4d | 2005-10-11 | 2005-10-14 | 91 | 47d | 0d |  | Kunal | 32h |
| 100 | 1.6.1.4.3 | Evaluate Results & Consolidate Documents/ Design |  | 1d | 2005-10-17 | 2005-10-17 | 99 | 47d |  | start no earlier than 2004-11-16 | Eric; Vinay; Kunal | 24h |
| 101 | 1.6.1.5 | Iteration Complete | milestone | 0d | 2005-10-17 | 2005-10-17 | 97 | 47d |  | start no earlier than 2005-08-05 |  |  |
| 102 | 1.6.2 | **Iteration - Auth Policy Caching** |  | 45d | 2005-08-01 | 2005-09-30 |  | 26d |  |  |  | 352h |
| 103 | 1.6.2.1 | Detailed Iteration Plan |  | 1d | 2005-08-01 | 2005-08-01 | 64 | 26d | 0d | start no earlier than 2004-10-26 | Kunal | 8h |

| ID | WBS | Task | Type | Duration | Start | Finish | Predecessors | Total slack | Free slack | Constraint | Resources | Work |
| --- | --- | --- | --- | --- | --- | --- | --- | --- | --- | --- | --- | --- |
| 104 | 1.6.2.2 | **Design** |  | 9d | 2005-08-02 | 2005-08-12 |  | 26d |  |  |  | 120h |
| 105 | 1.6.2.2.1 | Level 3 - 4 Use Cases |  | 3d | 2005-08-02 | 2005-08-04 | 103 | 26d | 0d | start no earlier than 2004-10-27 | Kunal | 24h |
| 106 | 1.6.2.2.2 | Use Case Model |  | 1d | 2005-08-05 | 2005-08-05 | 105 | 26d | 0d | start no earlier than 2004-10-27 | Kunal | 8h |
| 107 | 1.6.2.2.3 | UML Sequence Diagram |  | 1d | 2005-08-08 | 2005-08-08 | 106 | 26d | 18d |  | Kunal | 8h |
| 108 | 1.6.2.2.4 | UML Activity Diagram |  | 1d | 2005-08-08 | 2005-08-08 | 106 | 47d | 0d | start no earlier than 2004-10-29 | Kunal | 8h |
| 109 | 1.6.2.2.5 | UML Class Diagram |  | 3d | 2005-08-09 | 2005-08-11 | 108 | 47d | 0d |  | Kunal | 24h |
| 110 | 1.6.2.2.6 | Design Review |  | 1d | 2005-08-12 | 2005-08-12 | 109 | 47d | 0d |  | Charles | 8h |
| 111 | 1.6.2.2.7 | Test Case Development |  | 5d | 2005-08-08 | 2005-08-12 | 106 | 93d |  |  | Eric | 40h |
| 112 | 1.6.2.3 | **Implementation** |  | 17d | 2005-09-02 | 2005-09-26 |  | 8d | 0d |  |  | 152h |
| 113 | 1.6.2.3.1 | Environment Setup |  | 2d | 2005-09-02 | 2005-09-05 | 107, 141 | 8d | 0d | start no earlier than 2004-11-01 | XYZ | 16h |
| 114 | 1.6.2.3.2 | Junit Test Development |  | 2d | 2005-09-06 | 2005-09-07 | 113 | 8d | 0d | start no earlier than 2005-07-15 | XYZ | 16h |
| 115 | 1.6.2.3.3 | Code Development + Unit Testing |  | 13d | 2005-09-08 | 2005-09-26 | 114 | 8d | 0d | start no earlier than 2004-11-08 | XYZ | 104h |
| 116 | 1.6.2.3.4 | Code Reviews |  | 2d | 2005-09-23 | 2005-09-26 | 115FS-2d | 8d | 0d | finish no earlier than 2004-11-15 | Charles | 16h |
| 117 | 1.6.2.3.5 | Promote to QA | milestone | 0d | 2005-09-26 | 2005-09-26 | 116 | 8d |  |  |  |  |
| 118 | 1.6.2.4 | **Integration Testing** |  | 4d | 2005-09-27 | 2005-09-30 |  | 8d | 0d |  |  | 72h |
| 119 | 1.6.2.4.1 | QA Testing |  | 3d | 2005-09-27 | 2005-09-29 | 112 | 59d |  |  | Eric | 24h |
| 120 | 1.6.2.4.2 | Bug Fixes |  | 3d | 2005-09-27 | 2005-09-29 | 112 | 8d | 0d |  | XYZ | 24h |
| 121 | 1.6.2.4.3 | Evaluate Results & Consolidate Documents/ Design |  | 1d | 2005-09-30 | 2005-09-30 | 120 | 58d |  | start no earlier than 2004-11-16 | Eric; Kunal; XYZ | 24h |
| 122 | 1.6.2.5 | Iteration Complete | milestone | 0d | 2005-09-30 | 2005-09-30 | 118 | 58d |  | start no earlier than 2005-08-05 |  |  |
| 123 | 1.6.3 | **Iteration - Authentication Web Service** |  | 25d | 2005-08-01 | 2005-09-02 |  | 8d |  |  |  | 328h |
| 124 | 1.6.3.1 | Detailed Iteration Plan |  | 1d | 2005-08-01 | 2005-08-01 | 64 | 8d | 0d | start no earlier than 2004-10-26 | XYZ | 8h |
| 125 | 1.6.3.2 | **Design** |  | 8d | 2005-08-02 | 2005-08-11 |  | 8d |  |  |  | 104h |
| 126 | 1.6.3.2.1 | Level 3 - 4 Use Cases |  | 2d | 2005-08-02 | 2005-08-03 | 124 | 8d | 0d | start no earlier than 2004-10-27 | XYZ | 16h |
| 127 | 1.6.3.2.2 | Use Case Model |  | 1d | 2005-08-04 | 2005-08-04 | 126 | 8d | 0d | start no earlier than 2004-10-27 | XYZ | 8h |
| 128 | 1.6.3.2.3 | UML Sequence Diagram |  | 1d | 2005-08-05 | 2005-08-05 | 127 | 8d | 0d |  | XYZ | 8h |
| 129 | 1.6.3.2.4 | UML Activity Diagram |  | 1d | 2005-08-05 | 2005-08-05 | 127 | 95d | 0d | start no earlier than 2004-10-29 | XYZ | 8h |
| 130 | 1.6.3.2.5 | UML Class Diagram |  | 2d | 2005-08-08 | 2005-08-09 | 129 | 95d | 0d |  | XYZ | 16h |
| 131 | 1.6.3.2.6 | Design Review |  | 1d | 2005-08-10 | 2005-08-10 | 130 | 95d |  |  | Charles | 8h |
| 132 | 1.6.3.2.7 | Test Case Development |  | 5d | 2005-08-05 | 2005-08-11 | 127 | 94d |  |  | Eric | 40h |

| ID | WBS | Task | Type | Duration | Start | Finish | Predecessors | Total slack | Free slack | Constraint | Resources | Work |
| --- | --- | --- | --- | --- | --- | --- | --- | --- | --- | --- | --- | --- |
| 133 | 1.6.3.3 | **Implementation** |  | 16d | 2005-08-08 | 2005-08-29 |  | 8d | 0d |  |  | 144h |
| 134 | 1.6.3.3.1 | Environment Setup |  | 2d | 2005-08-08 | 2005-08-09 | 128 | 8d | 0d | start no earlier than 2004-11-01 | XYZ | 16h |
| 135 | 1.6.3.3.2 | Junit Test Development |  | 2d | 2005-08-10 | 2005-08-11 | 134 | 8d | 0d | start no earlier than 2005-07-15 | XYZ | 16h |
| 136 | 1.6.3.3.3 | Code Development + Unit Testing |  | 12d | 2005-08-12 | 2005-08-29 | 135 | 8d | 0d | start no earlier than 2004-11-08 | XYZ | 96h |
| 137 | 1.6.3.3.4 | Code Reviews |  | 2d | 2005-08-26 | 2005-08-29 | 136FS-2d | 8d | 0d | finish no earlier than 2004-11-15 | Charles | 16h |
| 138 | 1.6.3.3.5 | Promote to QA | milestone | 0d | 2005-08-29 | 2005-08-29 | 137 | 8d |  |  |  |  |
| 139 | 1.6.3.4 | **Integration Testing** |  | 4d | 2005-08-30 | 2005-09-02 |  | 8d | 0d |  |  | 72h |
| 140 | 1.6.3.4.1 | QA Testing |  | 3d | 2005-08-30 | 2005-09-01 | 133 | 79d |  |  | Eric | 24h |
| 141 | 1.6.3.4.2 | Bug Fixes |  | 3d | 2005-08-30 | 2005-09-01 | 133 | 8d | 0d |  | XYZ | 24h |
| 142 | 1.6.3.4.3 | Evaluate Results & Consolidate Documents/ Design |  | 1d | 2005-09-02 | 2005-09-02 | 141 | 78d |  | start no earlier than 2004-11-16 | Eric; Vinay; Kunal | 24h |
| 143 | 1.6.3.5 | Iteration Complete | milestone | 0d | 2005-09-02 | 2005-09-02 | 139 | 78d |  | start no earlier than 2005-08-05 |  |  |
| 144 | 1.6.4 | **Iteration - Policy Adapters** |  | 41d | 2005-08-15 | 2005-10-10 |  | 0d |  |  |  | 464h |
| 145 | 1.6.4.1 | Detailed Iteration Plan |  | 2d | 2005-08-15 | 2005-08-16 | 89 | 0d |  | start no earlier than 2004-10-26 | Vinay | 16h |
| 146 | 1.6.4.2 | **Design** |  | 9d | 2005-08-17 | 2005-08-29 |  | 0d |  |  |  | 120h |
| 147 | 1.6.4.2.1 | Level 3 - 4 Use Cases |  | 3d | 2005-08-17 | 2005-08-19 | 145 | 0d |  | start no earlier than 2004-10-27 | Vinay | 24h |
| 148 | 1.6.4.2.2 | Use Case Model |  | 1d | 2005-08-22 | 2005-08-22 | 147 | 0d |  | start no earlier than 2004-10-27 | Vinay | 8h |
| 149 | 1.6.4.2.3 | UML Sequence Diagram |  | 1d | 2005-08-23 | 2005-08-23 | 148 | 0d |  |  | Vinay | 8h |
| 150 | 1.6.4.2.4 | UML Activity Diagram |  | 1d | 2005-08-23 | 2005-08-23 | 148 | 82d | 0d | start no earlier than 2004-10-29 | Vinay | 8h |
| 151 | 1.6.4.2.5 | UML Class Diagram |  | 3d | 2005-08-24 | 2005-08-26 | 150 | 82d | 0d |  | Vinay | 24h |
| 152 | 1.6.4.2.6 | Design Review |  | 1d | 2005-08-29 | 2005-08-29 | 151 | 82d |  |  | Charles | 8h |
| 153 | 1.6.4.2.7 | Test Case Development |  | 5d | 2005-08-23 | 2005-08-29 | 148 | 82d |  |  | Eric | 40h |
| 154 | 1.6.4.3 | **Implementation** |  | 29d | 2005-08-24 | 2005-10-03 |  | 0d |  |  |  | 248h |
| 155 | 1.6.4.3.1 | Environment Setup |  | 2d | 2005-08-24 | 2005-08-25 | 149 | 0d |  | start no earlier than 2004-11-01 | Vinay | 16h |
| 156 | 1.6.4.3.2 | Junit Test Development |  | 4d | 2005-08-26 | 2005-08-31 | 155 | 0d |  | start no earlier than 2005-07-15 | Vinay | 32h |
| 157 | 1.6.4.3.3 | Code Development + Unit Testing |  | 23d | 2005-09-01 | 2005-10-03 | 156 | 0d |  | start no earlier than 2004-11-08 | Vinay | 184h |
| 158 | 1.6.4.3.4 | Code Reviews |  | 2d | 2005-09-30 | 2005-10-03 | 157FS-2d | 0d |  | finish no earlier than 2004-11-15 | Charles | 16h |
| 159 | 1.6.4.3.5 | Promote to QA | milestone | 0d | 2005-10-03 | 2005-10-03 | 158 | 0d |  |  |  |  |

| ID | WBS | Task | Type | Duration | Start | Finish | Predecessors | Total slack | Free slack | Constraint | Resources | Work |
| --- | --- | --- | --- | --- | --- | --- | --- | --- | --- | --- | --- | --- |
| 160 | 1.6.4.4 | **Integration Testing** |  | 5d | 2005-10-04 | 2005-10-10 |  | 0d |  |  |  | 80h |
| 161 | 1.6.4.4.1 | QA Testing |  | 4d | 2005-10-04 | 2005-10-07 | 154 | 53d |  |  | Eric | 32h |
| 162 | 1.6.4.4.2 | Bug Fixes |  | 4d | 2005-10-04 | 2005-10-07 | 154 | 0d |  |  | Vinay | 32h |
| 163 | 1.6.4.4.3 | Evaluate Results & Consolidate Documents/ Design |  | 1d | 2005-10-10 | 2005-10-10 | 162 | 52d |  | start no earlier than 2004-11-16 | Eric; Vinay | 16h |
| 164 | 1.6.4.5 | Iteration Complete | milestone | 0d | 2005-10-10 | 2005-10-10 | 160 | 52d |  | start no earlier than 2005-08-05 |  |  |
| 165 | 1.6.5 | **Iteration - UPT Enhancements** |  | 51d | 2005-09-30 | 2005-12-09 |  | 8d |  |  |  | 576h |
| 166 | 1.6.5.1 | Detailed Iteration Plan |  | 1d | 2005-09-30 | 2005-09-30 | 120 | 8d | 0d | start no earlier than 2004-10-26 | XYZ | 8h |
| 167 | 1.6.5.2 | **Design** |  | 10d | 2005-10-03 | 2005-10-14 |  | 8d |  |  |  | 128h |
| 168 | 1.6.5.2.1 | Level 3 - 4 Use Cases |  | 3d | 2005-10-03 | 2005-10-05 | 166 | 8d | 0d | start no earlier than 2004-10-27 | XYZ | 24h |
| 169 | 1.6.5.2.2 | Use Case Model |  | 1d | 2005-10-06 | 2005-10-06 | 168 | 8d | 0d | start no earlier than 2004-10-27 | XYZ | 8h |
| 170 | 1.6.5.2.3 | UML Sequence Diagram |  | 1d | 2005-10-07 | 2005-10-07 | 169 | 8d | 0d |  | XYZ | 8h |
| 171 | 1.6.5.2.4 | UML Activity Diagram |  | 3d | 2005-10-07 | 2005-10-11 | 169 | 48d | 0d | start no earlier than 2004-10-29 | XYZ | 24h |
| 172 | 1.6.5.2.5 | UML Class Diagram |  | 2d | 2005-10-12 | 2005-10-13 | 171 | 48d | 0d |  | XYZ | 16h |
| 173 | 1.6.5.2.6 | Design Review |  | 1d | 2005-10-14 | 2005-10-14 | 172 | 48d |  |  | Charles | 8h |
| 174 | 1.6.5.2.7 | Test Case Development |  | 5d | 2005-10-07 | 2005-10-13 | 169 | 49d |  |  | Eric | 40h |
| 175 | 1.6.5.3 | **Implementation** |  | 38d | 2005-10-10 | 2005-11-30 |  | 8d | 0d |  |  | 320h |
| 176 | 1.6.5.3.1 | Environment Setup |  | 2d | 2005-10-10 | 2005-10-11 | 170 | 8d | 0d | start no earlier than 2004-11-01 | XYZ | 16h |
| 177 | 1.6.5.3.2 | Junit Test Development |  | 3d | 2005-10-12 | 2005-10-14 | 176 | 8d | 0d | start no earlier than 2005-07-15 | XYZ | 24h |
| 178 | 1.6.5.3.3 | Code Development + Unit Testing |  | 33d | 2005-10-17 | 2005-11-30 | 177 | 8d | 0d | start no earlier than 2004-11-08 | XYZ | 264h |
| 179 | 1.6.5.3.4 | Code Reviews |  | 2d | 2005-11-29 | 2005-11-30 | 178FS-2d | 8d | 0d | finish no earlier than 2004-11-15 | Charles | 16h |
| 180 | 1.6.5.3.5 | Promote to QA | milestone | 0d | 2005-11-30 | 2005-11-30 | 179 | 8d |  |  |  |  |
| 181 | 1.6.5.4 | **Integration Testing** |  | 7d | 2005-12-01 | 2005-12-09 |  | 8d | 0d |  |  | 120h |
| 182 | 1.6.5.4.1 | QA Testing |  | 6d | 2005-12-01 | 2005-12-08 | 175 | 9d |  |  | Eric | 48h |
| 183 | 1.6.5.4.2 | Bug Fixes |  | 6d | 2005-12-01 | 2005-12-08 | 175 | 8d | 0d |  | XYZ | 48h |
| 184 | 1.6.5.4.3 | Evaluate Results & Consolidate Documents/ Design |  | 1d | 2005-12-09 | 2005-12-09 | 183 | 8d |  | start no earlier than 2004-11-16 | Eric; XYZ; Kunal | 24h |
| 185 | 1.6.5.5 | Iteration Complete | milestone | 0d | 2005-12-09 | 2005-12-09 | 181 | 8d |  | start no earlier than 2005-08-05 |  |  |

| ID | WBS | Task | Type | Duration | Start | Finish | Predecessors | Total slack | Free slack | Constraint | Resources | Work |
| --- | --- | --- | --- | --- | --- | --- | --- | --- | --- | --- | --- | --- |
| 186 | 1.6.6 | **Iteration - AOP Integration** |  | 43d | 2005-10-24 | 2005-12-21 |  | 0d |  |  |  | 512h |
| 187 | 1.6.6.1 | Detailed Iteration Plan |  | 2d | 2005-10-24 | 2005-10-25 | 215 | 0d |  | start no earlier than 2004-10-26 | Vinay | 16h |
| 188 | 1.6.6.2 | **Design** |  | 10d | 2005-10-26 | 2005-11-08 |  | 0d |  |  |  | 128h |
| 189 | 1.6.6.2.1 | Level 3 - 4 Use Cases |  | 3d | 2005-10-26 | 2005-10-28 | 187 | 0d |  | start no earlier than 2004-10-27 | Vinay | 24h |
| 190 | 1.6.6.2.2 | Use Case Model |  | 1d | 2005-10-31 | 2005-10-31 | 189 | 0d |  | start no earlier than 2004-10-27 | Vinay | 8h |
| 191 | 1.6.6.2.3 | UML Sequence Diagram |  | 1d | 2005-11-01 | 2005-11-01 | 190 | 0d |  |  | Vinay | 8h |
| 192 | 1.6.6.2.4 | UML Activity Diagram |  | 1d | 2005-11-01 | 2005-11-01 | 190 | 31d | 0d | start no earlier than 2004-10-29 | Vinay | 8h |
| 193 | 1.6.6.2.5 | UML Class Diagram |  | 4d | 2005-11-02 | 2005-11-07 | 192 | 31d | 0d |  | Vinay | 32h |
| 194 | 1.6.6.2.6 | Design Review |  | 1d | 2005-11-08 | 2005-11-08 | 193 | 31d |  |  | Charles | 8h |
| 195 | 1.6.6.2.7 | Test Case Development |  | 5d | 2005-11-01 | 2005-11-07 | 190 | 32d |  |  | Eric | 40h |
| 196 | 1.6.6.3 | **Implementation** |  | 29d | 2005-11-02 | 2005-12-12 |  | 0d |  |  |  | 248h |
| 197 | 1.6.6.3.1 | Environment Setup |  | 2d | 2005-11-02 | 2005-11-03 | 191 | 0d |  | start no earlier than 2004-11-01 | Kunal | 16h |
| 198 | 1.6.6.3.2 | Junit Test Development |  | 4d | 2005-11-04 | 2005-11-09 | 197 | 0d |  | start no earlier than 2005-07-15 | Kunal | 32h |
| 199 | 1.6.6.3.3 | Code Development + Unit Testing |  | 23d | 2005-11-10 | 2005-12-12 | 198 | 0d |  | start no earlier than 2004-11-08 | Kunal | 184h |
| 200 | 1.6.6.3.4 | Code Reviews |  | 2d | 2005-12-09 | 2005-12-12 | 199FS-2d | 0d |  | finish no earlier than 2004-11-15 | Charles | 16h |
| 201 | 1.6.6.3.5 | Promote to QA | milestone | 0d | 2005-12-12 | 2005-12-12 | 200 | 0d |  |  |  |  |
| 202 | 1.6.6.4 | **Integration Testing** |  | 7d | 2005-12-13 | 2005-12-21 |  | 0d |  |  |  | 120h |
| 203 | 1.6.6.4.1 | QA Testing |  | 6d | 2005-12-13 | 2005-12-20 | 196 | 1d |  |  | Eric | 48h |
| 204 | 1.6.6.4.2 | Bug Fixes |  | 6d | 2005-12-13 | 2005-12-20 | 196 | 0d |  |  | Kunal | 48h |
| 205 | 1.6.6.4.3 | Evaluate Results & Consolidate Documents/ Design |  | 1d | 2005-12-21 | 2005-12-21 | 204 | 0d |  | start no earlier than 2004-11-16 | Eric; Vinay; Kunal | 24h |
| 206 | 1.6.6.5 | Iteration Complete | milestone | 0d | 2005-12-21 | 2005-12-21 | 202 | 0d |  | start no earlier than 2005-08-05 |  |  |
| 207 | 1.6.7 | **Iteration - Message Level Security** |  | 39d | 2005-10-10 | 2005-12-01 |  | 0d |  |  |  | 448h |
| 208 | 1.6.7.1 | Detailed Iteration Plan |  | 1d | 2005-10-10 | 2005-10-10 | 162 | 0d |  | start no earlier than 2004-10-26 | Vinay | 8h |
| 209 | 1.6.7.2 | **Design** |  | 9d | 2005-10-11 | 2005-10-21 |  | 0d |  |  |  | 120h |
| 210 | 1.6.7.2.1 | Level 3 - 4 Use Cases |  | 3d | 2005-10-11 | 2005-10-13 | 208 | 0d |  | start no earlier than 2004-10-27 | Vinay | 24h |
| 211 | 1.6.7.2.2 | Use Case Model |  | 1d | 2005-10-14 | 2005-10-14 | 210 | 0d |  | start no earlier than 2004-10-27 | Vinay | 8h |
| 212 | 1.6.7.2.3 | UML Sequence Diagram |  | 1d | 2005-10-17 | 2005-10-17 | 211 | 14d | 0d |  | Vinay | 8h |
| 213 | 1.6.7.2.4 | UML Activity Diagram |  | 1d | 2005-10-17 | 2005-10-17 | 211 | 0d |  | start no earlier than 2004-10-29 | Vinay | 8h |
| 214 | 1.6.7.2.5 | UML Class Diagram |  | 3d | 2005-10-18 | 2005-10-20 | 213 | 0d |  |  | Vinay | 24h |
| 215 | 1.6.7.2.6 | Design Review |  | 1d | 2005-10-21 | 2005-10-21 | 214 | 0d |  |  | Charles | 8h |
| 216 | 1.6.7.2.7 | Test Case Development |  | 5d | 2005-10-17 | 2005-10-21 | 211 | 43d |  |  | Eric | 40h |

| ID | WBS | Task | Type | Duration | Start | Finish | Predecessors | Total slack | Free slack | Constraint | Resources | Work |
| --- | --- | --- | --- | --- | --- | --- | --- | --- | --- | --- | --- | --- |
| 217 | 1.6.7.3 | **Implementation** |  | 28d | 2005-10-18 | 2005-11-24 |  | 14d | 0d |  |  | 240h |
| 218 | 1.6.7.3.1 | Environment Setup |  | 2d | 2005-10-18 | 2005-10-19 | 212 | 14d | 0d | start no earlier than 2004-11-01 | Vinay | 16h |
| 219 | 1.6.7.3.2 | Junit Test Development |  | 3d | 2005-10-20 | 2005-10-24 | 218 | 14d | 0d | start no earlier than 2005-07-15 | Vinay | 24h |
| 220 | 1.6.7.3.3 | Code Development + Unit Testing |  | 23d | 2005-10-25 | 2005-11-24 | 219 | 14d | 0d | start no earlier than 2004-11-08 | Vinay | 184h |
| 221 | 1.6.7.3.4 | Code Reviews |  | 2d | 2005-11-23 | 2005-11-24 | 220FS-2d | 14d | 0d | finish no earlier than 2004-11-15 | Charles | 16h |
| 222 | 1.6.7.3.5 | Promote to QA | milestone | 0d | 2005-11-24 | 2005-11-24 | 221 | 14d |  |  |  |  |
| 223 | 1.6.7.4 | **Integration Testing** |  | 5d | 2005-11-25 | 2005-12-01 |  | 14d | 0d |  |  | 80h |
| 224 | 1.6.7.4.1 | QA Testing |  | 4d | 2005-11-25 | 2005-11-30 | 217 | 15d |  |  | Eric | 32h |
| 225 | 1.6.7.4.2 | Bug Fixes |  | 4d | 2005-11-25 | 2005-11-30 | 217 | 14d | 0d |  | Vinay | 32h |
| 226 | 1.6.7.4.3 | Evaluate Results & Consolidate Documents/ Design |  | 1d | 2005-12-01 | 2005-12-01 | 225 | 14d |  | start no earlier than 2004-11-16 | Eric; Vinay | 16h |
| 227 | 1.6.7.5 | Iteration Complete | milestone | 0d | 2005-12-01 | 2005-12-01 | 223 | 14d |  | start no earlier than 2005-08-05 |  |  |
| 228 | 1.7 | **Transition** |  | 23d | 2005-12-21 | 2006-01-23 | 80 | 0d |  |  |  | 657.6h |
| 229 | 1.7.1 | **Iteration I** |  | 18d | 2005-12-21 | 2006-01-16 |  | 0d |  |  |  | 617.6h |
| 230 | 1.7.1.1 | **QA Testing** |  | 12d | 2005-12-22 | 2006-01-06 |  | 6d |  |  |  | 112h |
| 231 | 1.7.1.1.1 | Setup of Environment |  | 2d | 2005-12-22 | 2005-12-23 |  | 6d | 0d |  | Kunal; Vinay | 32h |
| 232 | 1.7.1.1.2 | Regression Testing |  | 10d | 2005-12-26 | 2006-01-06 | 231 | 6d |  |  | Eric | 80h |
| 233 | 1.7.1.1.3 | Bug Fixes |  | 3d | 2005-12-22 | 2005-12-26 |  | 15d |  | finish no earlier than 2005-11-15 |  |  |
| 234 | 1.7.1.2 | **Documentation** |  | 18d | 2005-12-22 | 2006-01-16 |  | 0d |  |  |  | 505.6h |
| 235 | 1.7.1.2.1 | Application Developers Guide Document |  | 15d | 2005-12-22 | 2006-01-11 |  | 0d |  | finish no earlier than 2005-02-04 | Kunal; Eric; Vinay | 360h |
| 236 | 1.7.1.2.2 | Java Docs |  | 4d | 2005-12-22 | 2005-12-27 | 80 | 14d |  | start no earlier than 2005-01-24 | Kunal; Vinay | 41.6h |
| 237 | 1.7.1.2.3 | UPT User Guide Updation |  | 10d | 2005-12-22 | 2006-01-04 | 80 | 8d |  | start no earlier than 2005-02-07 | Eric | 80h |
| 238 | 1.7.1.2.4 | caCore Technical Guide Modifications |  | 2d | 2006-01-12 | 2006-01-13 | 235 | 0d |  | finish no earlier than 2005-02-14 | Eric | 16h |
| 239 | 1.7.1.2.5 | Release Notes |  | 1d | 2006-01-16 | 2006-01-16 | 238 | 0d |  |  | Eric | 8h |
| 240 | 1.7.1.3 | Iteration I Complete | milestone | 0d | 2005-12-21 | 2005-12-21 |  | 0d |  | start no earlier than 2005-02-15 |  |  |

| ID | WBS | Task | Type | Duration | Start | Finish | Predecessors | Total slack | Constraint | Resources | Work |
| --- | --- | --- | --- | --- | --- | --- | --- | --- | --- | --- | --- |
| 241 | 1.7.2 | **Iteration II** |  | 4d | 2006-01-16 | 2006-01-20 | 229 | 0d |  |  | 40h |
| 242 | 1.7.2.1 | **Staging Environment Testing** |  | 4d | 2006-01-17 | 2006-01-20 |  | 0d |  |  | 40h |
| 243 | 1.7.2.1.1 | Setup of Environment |  | 1d | 2006-01-17 | 2006-01-17 |  | 0d |  | Kunal; Vinay | 16h |
| 244 | 1.7.2.1.2 | Regression Testing |  | 3d | 2006-01-18 | 2006-01-20 | 243 | 0d |  | Eric | 24h |
| 245 | 1.7.2.1.3 | Bug Fixes |  | 1d | 2006-01-17 | 2006-01-17 |  | 3d | finish no earlier than 2005-11-15 |  |  |
| 246 | 1.7.2.2 | Iteration II Complete | milestone | 0d | 2006-01-16 | 2006-01-16 |  | 0d | start no earlier than 2005-02-28 |  |  |
| 247 | 1.7.3 | **Release** |  | 1d | 2006-01-23 | 2006-01-23 | 241 | 0d |  |  |  |
| 248 | 1.7.3.1 | Tag into the CVS & Release |  | 1d | 2006-01-23 | 2006-01-23 |  | 0d | start no earlier than 2005-03-07 |  |  |
