# NCICBSecurity_3_0_1

Schedule from MS Project, 2005-04-01 to 2005-11-30, A marks actual dates.
Home

## Calendars

- Standard: Mon-Fri 08:00-12:00, 13:00-17:00; Sat-Sun off.

## Resources

| Resource |
| --- |
| Vinay |
| Resource 1 |
| Brian |
| Kalpesh |
| Kunal |
| Eric |
| Charles |
| Team |
| Steve |
| JJ |
| Kunal Eric |
| Viany |
| New |
| XYZ |
| Terpsys |

## Schedule

| ID | WBS | Task | Duration | Start | Finish | Predecessors | Complete | Remaining | Total slack | Free slack | Constraint | Resources | Work | Actual work |
| --- | --- | --- | --- | --- | --- | --- | --- | --- | --- | --- | --- | --- | --- | --- |
| 1 | 1 | **Security Module (Release four)** | 174d? | 2005-04-01 A | 2005-11-30 |  | 42% | 101.58d? | 38d |  |  |  | 2984.1h | 1843.08h |
| 2 | 1.1 | Application Integration and Support | 174d? | 2005-04-01 | 2005-11-30 |  |  |  | 0d |  | start no earlier than 2005-04-01 | Kunal [25%]; Vinay [5%] | 348.4h |  |
| 3 | 1.2 | **Inception** | 34d? | 2005-04-01 A | 2005-05-18 |  | 60% | 13.67d? | 140d |  |  |  | 803.6h | 516h |
| 4 | 1.2.1 | Phase 3 Evaluation | 5.25d | 2005-04-04 A | 2005-04-11 |  | 67% | 1.75d | 205.75d |  | start no earlier than 2004-08-02 | Vinay; Kunal | 56h | 28h |
| 5 | 1.2.2 | RI Fixing | 3d | 2005-04-11 A | 2005-04-14 A | 4 | 100% |  |  |  |  | Kunal; Brian | 48h | 48h |
| 6 | 1.2.3 | RI documentation | 7d | 2005-04-01 A | 2005-04-11 A |  | 100% |  |  |  | finish no earlier than 2005-04-11 | Kunal; Eric | 112h | 112h |
| 7 | 1.2.4 | Ri Testing and release | 4d | 2005-04-12 A | 2005-04-15 A | 6 | 100% |  |  |  | finish no earlier than 2005-04-15 | Kunal; Eric; Vinay | 96h | 96h |
| 8 | 1.2.5 | caBIG Annual Meeting | 2d | 2005-04-12 A | 2005-04-13 A | 7 | 100% |  |  |  |  | Vinay; Eric; Kunal; Kalpesh | 64h | 64h |
| 9 | 1.2.6 | Research & Analysis | 5d | 2005-04-14 | 2005-04-20 | 8 |  |  | 193d |  |  | Vinay; Kunal | 80h |  |
| 10 | 1.2.7 | CM configuration | 2d | 2005-04-21 A | 2005-04-22 A | 9 | 100% |  |  |  | start no earlier than 2005-04-20 | Eric; Kunal | 32h | 32h |
| 11 | 1.2.8 | Overall Scope and Vision Document | 5d | 2005-04-11 A | 2005-04-21 A |  | 100% |  |  |  | finish no earlier than 2005-04-21 | Vinay; Eric; Kunal | 104h | 104h |
| 12 | 1.2.9 | SDK Research & Analysis | 2d | 2005-04-26 A | 2005-04-27 A |  | 100% |  |  |  | start no earlier than 2005-04-26 | Vinay | 16h | 16h |
| 13 | 1.2.10 | SDK Scope/Vision Document | 2d | 2005-04-27 A | 2005-04-28 A | 12FS-1d | 100% |  |  |  | start no earlier than 2005-04-27 | Vinay | 16h | 16h |
| 14 | 1.2.11 | Scope Vision Review & Discussion | 1d | 2005-04-29 | 2005-04-29 | 13 |  |  | 115.15d | 0d |  |  |  |  |
| 15 | 1.2.12 | Supplentary Specifications | 3d | 2005-05-04 | 2005-05-06 | 25 |  |  | 173d | 0d | start no earlier than 2004-09-01 | Vinay; Kunal [15%] | 27.6h |  |
| 16 | 1.2.13 | Review Supplementart Specs | 1d | 2005-05-09 | 2005-05-09 | 15 |  |  | 180d |  |  | Eric | 8h |  |
| 17 | 1.2.14 | SWG Meeting | 0.75d? | 2005-05-05 | 2005-05-05 |  |  |  | 182.25d |  | start no earlier than 2005-05-05 | Vinay; Kunal; Eric; Charles | 24h |  |
| 18 | 1.2.15 | Fuctional Specifications | 7d | 2005-05-09 | 2005-05-17 | 15 |  |  | 173d | 0d |  | Vinay; Kunal | 112h |  |
| 19 | 1.2.16 | Identify Risk List | 0.5d | 2005-05-17 | 2005-05-18 | 18 |  |  | 173d | 0d |  | Charles; Vinay | 4h |  |
| 20 | 1.2.17 | Update Detail task plan | 0.5d | 2005-05-18 | 2005-05-18 | 19 |  |  | 173d |  | start no earlier than 2005-04-11 | Vinay; Charles | 4h |  |
| 21 | 1.3 | **3.0.1 Release** | 59d | 2005-04-25 A | 2005-07-14 |  | 96% | 2.43d | 99d |  |  |  | 976.4h | 917.2h |
| 22 | 1.3.1 | Scope Document | 3d | 2005-04-25 A | 2005-04-27 A |  | 100% |  |  |  | start no earlier than 2005-04-22 | Vinay; Kunal | 48h | 48h |
| 23 | 1.3.2 | **Iteration I** | 16d | 2005-04-28 A | 2005-05-19 A | 22 | 100% |  |  |  |  |  | 395.2h | 395.2h |
| 24 | 1.3.2.1 | **API Changes & Bug Fixes** | 14d | 2005-05-02 A | 2005-05-19 A |  | 100% |  |  |  |  |  | 147.2h | 147.2h |
| 25 | 1.3.2.1.1 | Modify API for Negative Privileges | 2d | 2005-05-02 A | 2005-05-03 A | 14 | 100% |  |  |  | start no earlier than 2005-05-02 | Vinay [10%]; Kunal | 17.6h | 17.6h |
| 26 | 1.3.2.1.2 | Modify API for Primitive Data Types | 2d | 2005-05-03 A | 2005-05-04 A | 25FS-1d | 100% |  |  |  |  | Vinay [10%]; Kunal | 17.6h | 17.6h |
| 27 | 1.3.2.1.3 | Cross Database Compatibility | 12d | 2005-05-04 A | 2005-05-19 A | 25 | 100% |  |  |  |  | Vinay [20%]; Kunal | 112h | 112h |

| ID | WBS | Task | Duration | Start | Finish | Predecessors | Complete | Remaining | Total slack | Constraint | Resources | Work | Actual work |
| --- | --- | --- | --- | --- | --- | --- | --- | --- | --- | --- | --- | --- | --- |
| 28 | 1.3.2.2 | **UPT Changes & Bug Fixes** | 10d | 2005-04-28 A | 2005-05-11 A |  | 100% |  |  |  |  | 200h | 200h |
| 29 | 1.3.2.2.1 | UI Bug Fixes | 3d | 2005-04-28 A | 2005-05-02 A | 22 | 100% |  |  |  | Eric | 24h | 24h |
| 30 | 1.3.2.2.2 | Modify Association Screen | 4d | 2005-05-02 A | 2005-05-05 A | 29FS-1d | 100% |  |  |  | Kunal; Eric | 64h | 64h |
| 31 | 1.3.2.2.3 | Cross Browser Compatibility | 7d | 2005-05-03 A | 2005-05-11 A | 29 | 100% |  |  |  | Eric; Kunal | 112h | 112h |
| 32 | 1.3.2.3 | Integration Test - UPT Changes | 3d | 2005-05-13 A | 2005-05-17 A | 28 | 100% |  |  |  | Eric | 24h | 24h |
| 33 | 1.3.2.4 | Bug Fix | 1d | 2005-05-17 A | 2005-05-17 A | 28 | 100% |  |  | finish no earlier than 2005-05-17 | Eric | 8h | 8h |
| 34 | 1.3.2.5 | Test on QA | 1d | 2005-05-18 A | 2005-05-18 A | 32 | 100% |  |  |  | Eric | 8h | 8h |
| 35 | 1.3.2.6 | Release for FCCC only UPT.war | 1d | 2005-05-19 A | 2005-05-19 A | 34 | 100% |  |  |  | Kunal | 8h | 8h |
| 36 | 1.3.3 | **Iteration II** | 56d | 2005-04-28 A | 2005-07-14 |  | 93% | 3.73d | 99d |  |  | 533.2h | 474h |
| 37 | 1.3.3.1 | Modify nightly build script | 4d | 2005-04-28 A | 2005-05-03 A | 22 | 100% |  |  |  | Brian [25%]; Kunal | 9.6h | 9.6h |
| 38 | 1.3.3.2 | **API Changes & Bug Fixes** | 10d | 2005-05-20 A | 2005-06-02 A |  | 100% |  |  |  |  | 83.6h | 83.6h |
| 39 | 1.3.3.2.1 | Standardize Privileges and SWG Meeting | 1d | 2005-05-23 A | 2005-05-23 A | 23 | 100% |  |  | start no earlier than 2005-05-20 | Vinay [25%] | 2h | 2h |
| 40 | 1.3.3.2.2 | **Provide new Methods for Reporting & Changes for Caching** | 10d | 2005-05-20 A | 2005-06-02 A | 27 | 100% |  |  |  |  | 81.6h | 81.6h |
| 41 | 1.3.3.2.2.1 | Design | 3d | 2005-05-20 A | 2005-05-24 A |  | 100% |  |  |  | Kunal; Vinay [10%] | 25.6h | 25.6h |
| 42 | 1.3.3.2.2.2 | Implementation | 7d | 2005-05-25 A | 2005-06-02 A | 41 | 100% |  |  |  | Kunal | 56h | 56h |
| 43 | 1.3.3.3 | **UPT Changes & Bug Fixes** | 12d | 2005-05-26 A | 2005-06-10 A |  | 100% |  |  |  |  | 64h | 64h |
| 44 | 1.3.3.3.1 | Modify UPT for Standard Privileges | 2d | 2005-05-26 A | 2005-05-27 A | 55 | 100% |  |  |  | Eric | 16h | 16h |
| 45 | 1.3.3.3.2 | Provide Reporting Functionality | 6d | 2005-06-03 A | 2005-06-10 A | 42 | 100% |  |  |  | Kunal | 48h | 48h |
| 46 | 1.3.3.4 | **RI Changes & Bug Fixes** | 5d | 2005-06-13 A | 2005-06-17 A |  | 100% |  |  |  |  | 40h | 40h |
| 47 | 1.3.3.4.1 | Modify RI to use new APIs | 5d | 2005-06-13 A | 2005-06-17 A | 45 | 100% |  |  |  | Kunal | 40h | 40h |
| 48 | 1.3.3.5 | **Update Documentations** | 17d | 2005-05-30 A | 2005-06-21 A |  | 100% |  |  |  |  | 56h | 56h |
| 49 | 1.3.3.5.1 | RI Guide | 2d | 2005-06-20 A | 2005-06-21 A | 47 | 100% |  |  | start no earlier than 2005-06-02 | Kunal | 16h | 16h |
| 50 | 1.3.3.5.2 | Developers Guide | 3d | 2005-05-30 A | 2005-06-01 A | 44 | 100% |  |  |  | Eric | 24h | 24h |
| 51 | 1.3.3.5.3 | UPT Guide Changes | 2d | 2005-06-02 A | 2005-06-03 A | 50 | 100% |  |  |  | Eric | 16h | 16h |

| ID | WBS | Task | Duration | Start | Finish | Predecessors | Complete | Remaining | Total slack | Free slack | Constraint | Resources | Work | Actual work |
| --- | --- | --- | --- | --- | --- | --- | --- | --- | --- | --- | --- | --- | --- | --- |
| 52 | 1.3.3.6 | **Additonal Features** | 2d | 2005-06-06 A | 2005-06-07 A |  | 100% |  |  |  |  |  | 16h | 16h |
| 53 | 1.3.3.6.1 | Super User Privilges Added | 2d | 2005-06-06 A | 2005-06-07 A |  | 100% |  |  |  | start no earlier than 2005-06-06 | Eric | 16h | 16h |
| 54 | 1.3.3.7 | **Testing** | 39d | 2005-05-20 A | 2005-07-13 |  | 87% | 4.99d | 100d |  |  |  | 256h | 204.8h |
| 55 | 1.3.3.7.1 | Developing Test Cases | 4d | 2005-05-20 A | 2005-05-25 A | 35 | 100% |  |  |  |  | Eric | 32h | 32h |
| 56 | 1.3.3.7.2 | Integration Test - API and UPT Changes | 7d | 2005-06-13 A | 2005-06-21 A | 45 | 100% |  |  |  |  | Eric | 56h | 56h |
| 57 | 1.3.3.7.3 | Bug Fix | 7d | 2005-06-13 A | 2005-06-21 A | 45 | 100% |  |  |  | finish no earlier than 2005-05-17 | Kunal | 56h | 56h |
| 58 | 1.3.3.7.4 | Test on QA | 4d | 2005-06-22 A | 2005-06-27 | 56 | 95% | 0.2d | 112d |  |  | Eric; Kunal | 64h | 60.8h |
| 59 | 1.3.3.7.5 | Stage Testing | 3d | 2005-07-11 | 2005-07-13 |  |  |  | 91d | 0d | start no earlier than 2005-07-11 | Kunal; Eric | 48h |  |
| 60 | 1.3.3.8 | Releasing and Baselining | 1d | 2005-07-14 | 2005-07-14 | 59 |  |  | 99d |  |  | Kunal | 8h |  |
| 61 | 1.4 | **SDK Release** | 62d | 2005-05-02 A | 2005-07-26 | 14 | 53% | 29.36d | 91d |  |  | Vinay [75%] | 855.7h | 409.88h |
| 62 | 1.4.1 | Research/Design | 11d | 2005-05-02 A | 2005-05-16 A |  | 100% |  |  |  | start no earlier than 2005-05-02 | Vinay [75%] | 66h | 66h |
| 63 | 1.4.2 | Design Approach Review | 1d | 2005-05-17 A | 2005-05-17 A | 62 | 100% |  |  |  |  | Vinay [75%] | 6h | 6h |
| 64 | 1.4.3 | **Development** | 20d | 2005-05-23 A | 2005-06-17 A |  | 100% |  |  |  |  |  | 120h | 120h |
| 65 | 1.4.3.1 | Prototype | 10d | 2005-05-23 A | 2005-06-03 A |  | 100% |  |  |  | start no earlier than 2005-05-18 | Vinay [75%] | 60h | 60h |
| 66 | 1.4.3.2 | **Design** | 3d | 2005-06-06 A | 2005-06-08 A |  | 100% |  |  |  |  |  | 18h | 18h |
| 67 | 1.4.3.2.1 | Sequence Diagrams | 2d | 2005-06-06 A | 2005-06-07 A | 65 | 100% |  |  |  |  | Vinay [75%] | 12h | 12h |
| 68 | 1.4.3.2.2 | Class Diagram | 1d | 2005-06-08 A | 2005-06-08 A | 67 | 100% |  |  |  |  | Vinay [75%] | 6h | 6h |
| 69 | 1.4.3.3 | CSM Integration | 4d | 2005-06-09 A | 2005-06-14 A | 68 | 100% |  |  |  |  | Vinay [75%] | 24h | 24h |
| 70 | 1.4.3.4 | Code Generation | 3d | 2005-06-15 A | 2005-06-17 A | 69 | 100% |  |  |  |  | Vinay [75%] | 18h | 18h |
| 71 | 1.4.4 | Deploy to Unix Server | 0.25d | 2005-06-17 A | 2005-06-17 A |  | 100% |  |  |  | start no earlier than 2005-06-17 | Vinay [75%] | 1.5h | 1.5h |
| 72 | 1.4.5 | **Integration Testing** | 5d | 2005-06-20 A | 2005-06-24 A |  | 100% |  |  |  |  |  | 30h | 30h |
| 73 | 1.4.5.1 | Testing/Defect Fixes | 5d | 2005-06-20 A | 2005-06-24 A | 71, 70 | 100% |  |  |  |  | Vinay [75%] | 30h | 30h |
| 74 | 1.4.6 | **QA Testing** | 23d | 2005-06-08 | 2005-07-08 |  |  |  | 103d |  |  |  | 172h |  |
| 75 | 1.4.6.1 | Testing/Defect Fixes | 10d | 2005-06-27 | 2005-07-08 | 73 |  |  | 97.5d | 0d |  | Vinay [75%]; Eric | 140h |  |
| 76 | 1.4.6.2 | Test Plan Development | 8d | 2005-06-08 | 2005-06-17 |  |  |  | 118d |  | start no earlier than 2005-06-08 | Eric [50%] | 32h |  |

| ID | WBS | Task | Type | Duration | Start | Finish | Predecessors | Total slack | Free slack | Constraint | Resources | Work |
| --- | --- | --- | --- | --- | --- | --- | --- | --- | --- | --- | --- | --- |
| 77 | 1.4.7 | **Documentation** |  | 9d | 2005-07-14 | 2005-07-26 |  | 91d |  |  |  | 67.2h |
| 78 | 1.4.7.1 | SAD |  | 3d | 2005-07-14 | 2005-07-18 | 59 | 91d | 0d |  | Eric; Vinay [10%] | 14.4h |
| 79 | 1.4.7.2 | Developers Guide |  | 4d | 2005-07-19 | 2005-07-22 | 78 | 91d | 0d |  | Eric; Vinay [10%] | 35.2h |
| 80 | 1.4.7.3 | Deployment Guide |  | 2d | 2005-07-25 | 2005-07-26 | 79 | 91d | 0d |  | Eric; Vinay [10%] | 17.6h |
| 81 | 1.4.7.4 | Documentation For Review | milestone | 0d | 2005-07-26 | 2005-07-26 | 80 | 91d |  |  | Eric; Vinay [10%] |  |
| 82 | 1.4.8 | **Staging** |  | 5.5d | 2005-07-11 | 2005-07-18 |  | 96.5d | 0d |  |  | 33h |
| 83 | 1.4.8.1 | Promote to Staging |  | 0.5d | 2005-07-11 | 2005-07-11 | 75 | 97.5d | 0d |  | Vinay [75%] | 3h |
| 84 | 1.4.8.2 | Stage Testing |  | 5d | 2005-07-11 | 2005-07-18 | 83 | 96.5d |  |  | Vinay [75%] | 30h |
| 85 | 1.4.9 | Package For Production |  | 1d | 2005-07-18 | 2005-07-19 | 82 | 96.5d |  |  | Vinay [75%] | 6h |
| 86 | 1.4.10 | Production Release | milestone | 0d | 2005-07-22 | 2005-07-22 |  | 94d |  | start no earlier than 2005-07-22 | Vinay [75%]; Terpsys |  |
